# TrackIn - Cronograma de la Practica de Especialidad

Schedule from MS Project XML, 2026-08-03 to 2026-11-27, status date 2026-11-20.
Laboratorios Gutis Ltda.

## Calendars

- Estándar: Mon-Fri 08:00-12:00, 13:00-17:00; Sat-Sun off.

## Schedule

| ID | WBS | Task | Type | Duration | Start | Finish | Complete |
| --- | --- | --- | --- | --- | --- | --- | --- |
| 1 | 1 | **Práctica de Especialidad TrackIn** |  | 85d | 2026-08-03 | 2026-11-27 | 100% |
| 2 | 1.1 | **Semana de inducción** |  | 5d | 2026-08-03 | 2026-08-07 | 100% |
| 3 | 1.1.1 | Configuración del entorno de desarrollo y del repositorio | manual | 3d | 2026-08-03 | 2026-08-05 | 100% |
| 4 | 1.1.2 | Instalación de PostgreSQL 16 y PostGIS | manual | 2d | 2026-08-06 | 2026-08-07 | 100% |
| 5 | 1.1.3 | Minuta 01 con el profesor asesor | milestone, manual | 0d | 2026-08-07 | 2026-08-07 | 100% |
| 6 | 1.2 | **Sprint 1: Requerimientos y viabilidad técnica** |  | 10d | 2026-08-10 | 2026-08-21 | 100% |
| 7 | 1.2.1 | SRS v0.1 | manual | 2d | 2026-08-10 | 2026-08-11 | 100% |
| 8 | 1.2.2 | Levantamiento de requerimientos con las áreas usuarias | manual | 3d | 2026-08-12 | 2026-08-14 | 100% |
| 9 | 1.2.3 | Minuta 02 con el profesor asesor y el supervisor | milestone, manual | 0d | 2026-08-14 | 2026-08-14 | 100% |
| 10 | 1.2.4 | SRS v0.2 | manual | 1d | 2026-08-14 | 2026-08-14 | 100% |
| 11 | 1.2.5 | Spike técnico TG-10: AISStream | manual | 3d | 2026-08-17 | 2026-08-19 | 100% |
| 12 | 1.2.6 | Spike técnico TG-11: OpenSky Network | manual | 2d | 2026-08-18 | 2026-08-19 | 100% |
| 13 | 1.2.7 | SRS v0.3 con los hallazgos de los spikes | manual | 1d | 2026-08-20 | 2026-08-20 | 100% |
| 14 | 1.2.8 | Product backlog priorizado (TG-18) | manual | 2d | 2026-08-20 | 2026-08-21 | 100% |
| 15 | 1.3 | **Sprint 2: Análisis y diseño (OE1)** |  | 10d | 2026-08-24 | 2026-09-04 | 100% |
| 16 | 1.3.1 | Modelo de datos (TASK-12 a TASK-15) | manual | 2d | 2026-08-24 | 2026-08-25 | 100% |
| 17 | 1.3.2 | Diccionario de datos (TASK-16 a TASK-19, TASK-24, TASK-26) | manual | 2d | 2026-08-25 | 2026-08-26 | 100% |
| 18 | 1.3.3 | Arquitectura: componentes, despliegue y secuencia (TASK-20 a TASK-22) | manual | 2d | 2026-08-26 | 2026-08-27 | 100% |
| 19 | 1.3.4 | Wireframes y prototipo navegable en Figma (US-34 a US-38, US-41) | manual | 5d | 2026-08-27 | 2026-09-02 | 100% |
| 20 | 1.3.5 | Validación de prototipos con usuarios clave (US-39) | milestone, manual | 0d | 2026-09-02 | 2026-09-02 | 100% |
| 21 | 1.3.6 | SRS v0.4 (TASK-25) | manual | 2d | 2026-09-03 | 2026-09-04 | 100% |
| 22 | 1.4 | **Sprint 3: Persistencia e ingesta (OE2 y OE4)** |  | 10d | 2026-09-07 | 2026-09-18 | 100% |
| 23 | 1.4.1 | Esquema, migraciones y PostGIS (TASK-01, TASK-02) | manual | 2d | 2026-09-07 | 2026-09-08 | 100% |
| 24 | 1.4.2 | Maestros de países y destinos (TASK-29, TASK-31) | manual | 1d | 2026-09-09 | 2026-09-09 | 100% |
| 25 | 1.4.3 | Contrato de referencia e ingesta semilla (TASK-30, TASK-03, US-01) | manual | 2d | 2026-09-10 | 2026-09-11 | 100% |
| 26 | 1.4.4 | Resiliencia, AIS e historial de posiciones (US-02, US-03, US-04) | manual | 3d | 2026-09-14 | 2026-09-16 | 100% |
| 27 | 1.4.5 | Spike de fuentes comerciales (TASK-28) | manual | 3d | 2026-09-14 | 2026-09-16 | 100% |
| 28 | 1.4.6 | Consolidación del Informe 1 (TASK-23) | manual | 2d | 2026-09-17 | 2026-09-18 | 100% |

| ID | WBS | Task | Type | Duration | Start | Finish | Complete |
| --- | --- | --- | --- | --- | --- | --- | --- |
| 29 | 1.5 | **Sprint 4: Ingesta real, fuentes comerciales y motor de cálculo** |  | 10d | 2026-09-21 | 2026-10-02 | 100% |
| 30 | 1.5.1 | Carga y validación del archivo Z-tracking (US-31, US-32) | manual | 2d | 2026-09-21 | 2026-09-22 | 100% |
| 31 | 1.5.2 | Motor de cálculo: fecha proyectada, estado y arribo (US-09, US-10, US-11) | manual | 2d | 2026-09-22 | 2026-09-23 | 100% |
| 32 | 1.5.3 | Integración con ShipsGo marítimo y aéreo (US-45, US-46) | manual | 2d | 2026-09-23 | 2026-09-24 | 100% |
| 33 | 1.5.4 | Planificador, OpenSky y ETA estimada (US-07, US-05, US-06, US-08) | manual | 2d | 2026-09-24 | 2026-09-25 | 100% |
| 34 | 1.5.5 | Entrega del primer informe de avance | milestone, manual | 0d | 2026-09-25 | 2026-09-25 | 100% |
| 35 | 1.5.6 | Guías hijas por TICA (US-49) | manual | 1d | 2026-09-28 | 2026-09-28 | 100% |
| 36 | 1.5.7 | Reunión de seguimiento con el profesor asesor y la empresa | milestone, manual | 0d | 2026-09-28 | 2026-09-28 | 100% |
| 37 | 1.5.8 | Worker de rastreo y salud de las fuentes (US-50, US-51) | manual | 2d | 2026-09-29 | 2026-09-30 | 100% |
| 38 | 1.5.9 | Reunión con Compras y usuarios clave | milestone, manual | 0d | 2026-09-29 | 2026-09-29 | 100% |
| 39 | 1.5.10 | Puerto de llegada desde ShipsGo (US-52) y pruebas en vivo | manual | 2d | 2026-09-30 | 2026-10-01 | 100% |
| 40 | 1.5.11 | Revisión y cierre del Sprint 4 con el supervisor | milestone, manual | 0d | 2026-10-02 | 2026-10-02 | 100% |
| 41 | 1.6 | **Sprint 5: Reglas de negocio, API y seguridad** |  | 10d | 2026-10-05 | 2026-10-16 | 100% |
| 42 | 1.6.1 | API REST de pedidos y documentación OpenAPI (US-16, TASK-04) | manual | 2d | 2026-10-05 | 2026-10-06 | 100% |
| 43 | 1.6.2 | Reunión con Compras: prototipo final, ShipsGo y MAWB | milestone, manual | 0d | 2026-10-06 | 2026-10-06 | 100% |
| 44 | 1.6.3 | Recálculo y configuración fuera del código (US-12, US-17) | manual | 2d | 2026-10-06 | 2026-10-07 | 100% |
| 45 | 1.6.4 | Reunión con el supervisor: no existirá API de SAP | milestone, manual | 0d | 2026-10-07 | 2026-10-07 | 100% |
| 46 | 1.6.5 | Fecha comprometida y puerto de llegada (US-53, US-54) | manual | 1d | 2026-10-07 | 2026-10-07 | 100% |
| 47 | 1.6.6 | Spike Parcels (TASK-32) y maestro de destinos (US-13) | manual | 2d | 2026-10-08 | 2026-10-09 | 100% |
| 48 | 1.6.7 | Autenticación, sesión y roles (US-42) | manual | 2d | 2026-10-09 | 2026-10-12 | 100% |
| 49 | 1.6.8 | Auditoría de intervenciones (US-15) | manual | 2d | 2026-10-12 | 2026-10-13 | 100% |
| 50 | 1.6.9 | Desembarco, paso a aduana y recepción (US-14, US-18) | manual | 2d | 2026-10-13 | 2026-10-14 | 100% |
| 51 | 1.6.10 | Liberación de Calidad y ajuste manual (US-47, US-40) | manual | 2d | 2026-10-14 | 2026-10-15 | 100% |
| 52 | 1.6.11 | Revisión y cierre del Sprint 5 con el supervisor | milestone, manual | 0d | 2026-10-16 | 2026-10-16 | 100% |

| ID | WBS | Task | Type | Duration | Start | Finish | Complete |
| --- | --- | --- | --- | --- | --- | --- | --- |
| 53 | 1.7 | **Sprint 6: Dashboard web, carga desde la interfaz e integración SAP** |  | 10d | 2026-10-19 | 2026-10-30 | 100% |
| 54 | 1.7.1 | Andamiaje del frontend, grilla y carga del Z-tracking (TASK-05, US-19, US-58) | manual | 2d | 2026-10-19 | 2026-10-20 | 100% |
| 55 | 1.7.2 | Detalle, filtros, KPIs y próximos arribos (US-20, US-21, US-22, US-28) | manual | 3d | 2026-10-20 | 2026-10-22 | 100% |
| 56 | 1.7.3 | Entrega del segundo informe de avance | milestone, manual | 0d | 2026-10-23 | 2026-10-23 | 100% |
| 57 | 1.7.4 | Semáforo, frescura, vistas por rol y bandeja (US-23, US-24, US-43, US-48) | manual | 2d | 2026-10-23 | 2026-10-26 | 100% |
| 58 | 1.7.5 | Acciones del detalle, contraseña y usuarios (US-60, US-61, US-62) | manual | 2d | 2026-10-26 | 2026-10-27 | 100% |
| 59 | 1.7.6 | Reunión de entrega del Informe 2 con el profesor y la empresa | milestone, manual | 0d | 2026-10-27 | 2026-10-27 | 100% |
| 60 | 1.7.7 | Contrato y receptor de la API de SAP (US-64, US-65, US-66) | manual | 2d | 2026-10-27 | 2026-10-28 | 100% |
| 61 | 1.7.8 | Altas en ShipsGo, saldo de créditos y pantalla de planta (US-55, US-57, US-63) | manual | 3d | 2026-10-28 | 2026-10-30 | 100% |
| 62 | 1.8 | **Sprint 7: Mapas, historial y validación de la carga** |  | 10d | 2026-11-02 | 2026-11-13 | 100% |
| 63 | 1.8.1 | Mapas interactivos marítimo y aéreo (US-25, US-26) | manual | 3d | 2026-11-02 | 2026-11-04 | 100% |
| 64 | 1.8.2 | Información emergente y detalle con país de origen (US-27, US-44) | manual | 2d | 2026-11-04 | 2026-11-05 | 100% |
| 65 | 1.8.3 | Reunión con el profesor asesor (minuta 21) | milestone, manual | 0d | 2026-11-06 | 2026-11-06 | 100% |
| 66 | 1.8.4 | Plantilla y validación de formato del Z-tracking (US-59) | manual | 3d | 2026-11-05 | 2026-11-09 | 100% |
| 67 | 1.8.5 | Historial, trayecto y transbordos (US-29, US-30) | manual | 2d | 2026-11-09 | 2026-11-10 | 100% |
| 68 | 1.8.6 | ETA manual, pantalla permanente y retención del historial (US-67, US-33, TASK-10) | manual | 2d | 2026-11-11 | 2026-11-12 | 100% |
| 69 | 1.8.7 | Corrida en vivo del sistema con el profesor asesor | milestone, manual | 0d | 2026-11-13 | 2026-11-13 | 100% |
| 70 | 1.9 | **Cierre: Pruebas y documentación** |  | 10d | 2026-11-16 | 2026-11-27 | 100% |
| 71 | 1.9.1 | Pruebas de integración extremo a extremo (TASK-06) | manual | 2d | 2026-11-16 | 2026-11-17 | 100% |
| 72 | 1.9.2 | Manual de instalación y guía de despliegue (TASK-07, TASK-09) | manual | 2d | 2026-11-17 | 2026-11-18 | 100% |
| 73 | 1.9.3 | Manual de usuario (TASK-08) | manual | 2d | 2026-11-18 | 2026-11-19 | 100% |
| 74 | 1.9.4 | Entrega del informe final | milestone, manual | 0d | 2026-11-20 | 2026-11-20 | 100% |
| 75 | 1.9.5 | Fin de la práctica | milestone, manual | 0d | 2026-11-21 | 2026-11-21 |  |
| 76 | 1.9.6 | Presentación final del proyecto | milestone, manual | 0d | 2026-11-27 | 2026-11-27 |  |
